# Rise Of The Lost Colors

Schedule from MS Project, 2026-02-02 to 2026-05-20, status date 2026-04-13, 4 hours a day, costs in €, A marks actual dates.
Microsoft

## Calendars

- Estándar: Mon-Fri 10:00-14:00; Sat-Sun off.

## Resources

| Resource | Rate |
| --- | --- |
| Jefe de Proyecto | 30 |
| Diseñador | 25 |
| Tester | 15 |
| Equipo completo | 91 |
| Desarrollador | 21 |

## Schedule

| ID | WBS | Task | Duration | Start | Finish | Predecessors | Complete | Remaining | Baseline start | Baseline finish | Baseline duration | Total slack | Resources | Work | Actual work | Cost | Actual cost | "Sprint" |
| --- | --- | --- | --- | --- | --- | --- | --- | --- | --- | --- | --- | --- | --- | --- | --- | --- | --- | --- |
| 1 | 1 | **Gestión y Planificación** | 77d | 2026-02-02 A | 2026-05-19 |  | 75% | 18.9d | 2026-02-02 | 2026-05-19 | 77d | 1d |  | 111h | 83.75h | 5,038 | 2,695.5 |  |
| 2 | 1.1 | **Documentación** | 77d | 2026-02-02 A | 2026-05-19 |  | 75% | 18.9d | 2026-02-02 | 2026-05-19 | 77d | 1d |  | 111h | 83.75h | 5,038 | 2,695.5 |  |
| 3 | 1.1.1 | **GDD** | 8.75d | 2026-02-02 A | 2026-02-12 A |  | 100% |  | 2026-02-02 | 2026-02-12 | 8.75d |  |  | 35h | 35h | 1,050 | 1,050 |  |
| 4 | 1.1.1.1 | Redactar Game Design Document | 30h | 2026-02-02 A | 2026-02-11 A |  | 100% |  | 2026-02-02 | 2026-02-11 | 30h |  | Jefe de Proyecto | 30h | 30h | 900 | 900 | Planificación |
| 5 | 1.1.1.2 | Revisión y validación final del documento | 5h | 2026-02-11 A | 2026-02-12 A | 4 | 100% |  | 2026-02-11 | 2026-02-12 | 5h |  | Jefe de Proyecto | 5h | 5h | 150 | 150 | Planificación |
| 6 | 1.1.2 | **Plan de dirección** | 0.75d | 2026-02-12 A | 2026-02-13 A |  | 100% |  | 2026-02-12 | 2026-02-13 | 0.75d |  |  | 3h | 3h | 90 | 90 |  |
| 7 | 1.1.2.1 | Redactar plan de dirección del proyecto | 3h | 2026-02-12 A | 2026-02-13 A | 5 | 100% |  | 2026-02-12 | 2026-02-13 | 3h |  | Jefe de Proyecto | 3h | 3h | 90 | 90 | Planificación |
| 8 | 1.1.3 | **Requisitos** | 3.5d | 2026-02-13 A | 2026-02-18 A |  | 100% |  | 2026-02-13 | 2026-02-18 | 3.5d |  |  | 14h | 14h | 420 | 420 |  |
| 9 | 1.1.3.1 | Redactar plan de gestión de requisitos | 3h | 2026-02-13 A | 2026-02-16 A | 7 | 100% |  | 2026-02-13 | 2026-02-16 | 3h |  | Jefe de Proyecto | 3h | 3h | 90 | 90 | Planificación |
| 10 | 1.1.3.2 | Redacción del registro de requisitos | 6h | 2026-02-16 A | 2026-02-17 A | 9 | 100% |  | 2026-02-16 | 2026-02-17 | 6h |  | Jefe de Proyecto | 6h | 6h | 180 | 180 | Planificación |
| 11 | 1.1.3.3 | Elaboración de la matriz de requisitos y seguimiento | 5h | 2026-02-17 A | 2026-02-18 A | 10 | 100% |  | 2026-02-17 | 2026-02-18 | 5h |  | Jefe de Proyecto | 5h | 5h | 150 | 150 | Planificación |
| 12 | 1.1.4 | **Alcance** | 1.5d | 2026-02-19 A | 2026-02-20 A |  | 100% |  | 2026-02-19 | 2026-02-20 | 1.5d |  |  | 6h | 6h | 180 | 180 |  |
| 13 | 1.1.4.1 | Redactar enunciado del alcance | 3h | 2026-02-19 A | 2026-02-19 A | 11 | 100% |  | 2026-02-19 | 2026-02-19 | 3h |  | Jefe de Proyecto | 3h | 3h | 90 | 90 | Planificación |
| 14 | 1.1.4.2 | Redactar plan de gestión del alcance | 3h | 2026-02-19 A | 2026-02-20 A | 13 | 100% |  | 2026-02-19 | 2026-02-20 | 3h |  | Jefe de Proyecto | 3h | 3h | 90 | 90 | Planificación |
| 15 | 1.1.5 | **Costes** | 0.75d | 2026-02-20 A | 2026-02-23 A |  | 100% |  | 2026-02-20 | 2026-02-23 | 0.75d |  |  | 3h | 3h | 90 | 90 |  |
| 16 | 1.1.5.1 | Redactar plan de gestión de costes | 3h | 2026-02-20 A | 2026-02-23 A | 14 | 100% |  | 2026-02-20 | 2026-02-23 | 3h |  | Jefe de Proyecto | 3h | 3h | 90 | 90 | Planificación |
| 17 | 1.1.6 | **Cronograma** | 0.5d | 2026-02-23 A | 2026-02-23 A |  | 100% |  | 2026-02-23 | 2026-02-23 | 0.5d |  |  | 2h | 2h | 60 | 60 |  |
| 18 | 1.1.6.1 | Redactar plan de gestión del cronograma | 2h | 2026-02-23 A | 2026-02-23 A | 16 | 100% |  | 2026-02-23 | 2026-02-23 | 2h |  | Jefe de Proyecto | 2h | 2h | 60 | 60 | Planificación |
| 19 | 1.1.7 | **Riesgos** | 2d | 2026-02-23 A | 2026-02-25 A |  | 100% |  | 2026-02-23 | 2026-02-25 | 2d |  |  | 8h | 8h | 240 | 240 |  |
| 20 | 1.1.7.1 | Redactar plan de gestión de riesgos | 2h | 2026-02-23 A | 2026-02-24 A | 18 | 100% |  | 2026-02-23 | 2026-02-24 | 2h |  | Jefe de Proyecto | 2h | 2h | 60 | 60 | Planificación |
| 21 | 1.1.7.2 | Redacción del registro de riesgos | 6h | 2026-02-24 A | 2026-02-25 A | 20 | 100% |  | 2026-02-24 | 2026-02-25 | 6h |  | Jefe de Proyecto | 6h | 6h | 180 | 180 | Planificación |
| 22 | 1.1.8 | **Calidad** | 0.75d | 2026-02-25 A | 2026-02-26 A |  | 100% |  | 2026-02-25 | 2026-02-26 | 0.75d |  |  | 3h | 3h | 90 | 90 |  |
| 23 | 1.1.8.1 | Redactar plan de gestión de calidad | 3h | 2026-02-25 A | 2026-02-26 A | 21 | 100% |  | 2026-02-25 | 2026-02-26 | 3h |  | Jefe de Proyecto | 3h | 3h | 90 | 90 | Planificación |
| 24 | 1.1.9 | **Seguimiento** | 77d | 2026-02-02 A | 2026-05-19 |  | 26% | 56.71d | 2026-02-02 | 2026-05-19 | 77d | 1d |  | 37h | 9.75h | 2,818 | 475.5 |  |
| 25 | 1.1.9.1 | Redacción del registro de incidencias (Sprint 1) | 0.75h | 2026-03-24 A | 2026-03-24 A | 152 | 100% |  | 2026-03-24 | 2026-03-24 | 0.75h |  | Jefe de Proyecto | 0.75h | 0.75h | 22.5 | 22.5 | Sprint 1 |
| 26 | 1.1.9.2 | Redacción del registro de incidencias (Sprint 2) | 0.75h | 2026-04-14 A | 2026-04-14 A | 180 | 100% |  | 2026-04-14 | 2026-04-14 | 0.75h |  | Jefe de Proyecto | 0.75h | 0.75h | 22.5 | 22.5 | Sprint 2 |
| 27 | 1.1.9.3 | Redacción del registro de incidencias (Sprint 3) | 0.75h | 2026-05-08 A | 2026-05-08 A | 196 | 100% |  | 2026-05-08 | 2026-05-08 | 0.75h |  | Jefe de Proyecto | 0.75h | 0.75h | 22.5 | 22.5 | Sprint 3 |
| 28 | 1.1.9.4 | Redacción del registro de incidencias (Sprint 4) | 0.75h | 2026-05-19 | 2026-05-19 | 275 |  |  | 2026-05-19 | 2026-05-19 | 0.75h | 0.06d | Jefe de Proyecto | 0.75h |  | 22.5 |  | Sprint 4 |
| 29 | 1.1.9.5 | Redacción del registro de decisiones (Sprint 1) | 0.75h | 2026-03-24 A | 2026-03-24 A | 152 | 100% |  | 2026-03-24 | 2026-03-24 | 0.75h |  | Jefe de Proyecto | 0.75h | 0.75h | 22.5 | 22.5 | Sprint 1 |
| 30 | 1.1.9.6 | Redacción del registro de decisiones (Sprint 2) | 0.75h | 2026-04-14 A | 2026-04-14 A | 180 | 100% |  | 2026-04-14 | 2026-04-14 | 0.75h |  | Jefe de Proyecto | 0.75h | 0.75h | 22.5 | 22.5 | Sprint 2 |
| 31 | 1.1.9.7 | Redacción del registro de decisiones (Sprint 3) | 0.75h | 2026-05-08 A | 2026-05-08 A | 196 | 100% |  | 2026-05-08 | 2026-05-08 | 0.75h |  | Jefe de Proyecto | 0.75h | 0.75h | 22.5 | 22.5 | Sprint 3 |
| 32 | 1.1.9.8 | Redacción del registro de decisiones (Sprint 4) | 0.75h | 2026-05-19 | 2026-05-19 | 275 |  |  | 2026-05-19 | 2026-05-19 | 0.75h | 0.06d | Jefe de Proyecto | 0.75h |  | 22.5 |  | Sprint 4 |
| 33 | 1.1.9.9 | Redacción del registro de cambios (Sprint 1) | 0.75h | 2026-03-24 A | 2026-03-24 A | 152 | 100% |  | 2026-03-24 | 2026-03-24 | 0.75h |  | Jefe de Proyecto | 0.75h | 0.75h | 22.5 | 22.5 | Sprint 1 |
| 34 | 1.1.9.10 | Redacción del registro de cambios (Sprint 2) | 0.75h | 2026-04-14 A | 2026-04-14 A | 180 | 100% |  | 2026-04-14 | 2026-04-14 | 0.75h |  | Jefe de Proyecto | 0.75h | 0.75h | 22.5 | 22.5 | Sprint 2 |
| 35 | 1.1.9.11 | Redacción del registro de cambios (Sprint 3) | 0.75h | 2026-05-08 A | 2026-05-08 A | 196 | 100% |  | 2026-05-08 | 2026-05-08 | 0.75h |  | Jefe de Proyecto | 0.75h | 0.75h | 22.5 | 22.5 | Sprint 3 |
| 36 | 1.1.9.12 | Redacción del registro de cambios (Sprint 4) | 0.75h | 2026-05-19 | 2026-05-19 | 275 |  |  | 2026-05-19 | 2026-05-19 | 0.75h | 0.06d | Jefe de Proyecto | 0.75h |  | 22.5 |  | Sprint 4 |
| 37 | 1.1.9.13 | Reuniones internas del equipo | 16h | 2026-02-02 | 2026-02-05 |  |  |  | 2026-02-02 | 2026-02-05 | 16h | 74d | Equipo completo | 16h |  | 1,456 |  |  |
| 38 | 1.1.9.14 | Reuniones con el tutor | 8h | 2026-02-02 | 2026-02-03 |  |  |  | 2026-02-02 | 2026-02-03 | 8h | 76d | Equipo completo | 8h |  | 728 |  |  |
| 39 | 1.1.9.15 | Sprint Review (Sprint 1) | 1h | 2026-03-24 A | 2026-03-24 A | 152 | 100% |  | 2026-03-24 | 2026-03-24 | 1h |  | Equipo completo | 1h | 1h | 91 | 91 | Sprint 1 |
| 40 | 1.1.9.16 | Sprint Review (Sprint 2) | 1h | 2026-04-14 A | 2026-04-14 A | 180 | 100% |  | 2026-04-14 | 2026-04-14 | 1h |  | Equipo completo | 1h | 1h | 91 | 91 | Sprint 2 |
| 41 | 1.1.9.17 | Sprint Review (Sprint 3) | 1h | 2026-05-08 A | 2026-05-08 A | 196 | 100% |  | 2026-05-08 | 2026-05-08 | 1h |  | Equipo completo | 1h | 1h | 91 | 91 | Sprint 3 |
| 42 | 1.1.9.18 | Sprint Review (Sprint 4) | 1h | 2026-05-19 | 2026-05-19 | 275 |  |  | 2026-05-19 | 2026-05-19 | 1h | 0d | Equipo completo | 1h |  | 91 |  | Sprint 4 |

| ID | WBS | Task | Duration | Start | Finish | Predecessors | Complete | Remaining | Baseline start | Baseline finish | Baseline duration | Total slack | Resources | Work | Actual work | Cost | Actual cost | "Sprint" |
| --- | --- | --- | --- | --- | --- | --- | --- | --- | --- | --- | --- | --- | --- | --- | --- | --- | --- | --- |
| 43 | 2 | **Núcleo jugable** | 47.5d | 2026-02-26 A | 2026-05-04 |  | 83% | 8.16d | 2026-02-26 | 2026-05-04 | 47.5d | 12d |  | 514h | 425.75h | 11,438 | 9,375.15 |  |
| 44 | 2.1 | **Sistema del jugador** | 41.75d | 2026-02-26 A | 2026-04-27 |  | 95% | 1.88d | 2026-02-26 | 2026-04-27 | 41.75d | 0d |  | 113h | 107.9h | 2,533 | 2,405.5 |  |
| 45 | 2.1.1 | **Diseño funcional** | 2.5d | 2026-02-26 A | 2026-03-02 A |  | 100% |  | 2026-02-26 | 2026-03-02 | 2.5d |  |  | 10h | 10h | 250 | 250 |  |
| 46 | 2.1.1.1 | Definir atributos y habilidades base del jugador | 3h | 2026-02-26 A | 2026-02-27 A | 23 | 100% |  | 2026-02-26 | 2026-02-27 | 3h |  | Diseñador | 3h | 3h | 75 | 75 | Sprint 1 |
| 47 | 2.1.1.2 | Especificar acciones disponibles | 3h | 2026-02-27 A | 2026-02-27 A | 46 | 100% |  | 2026-02-27 | 2026-02-27 | 3h |  | Diseñador | 3h | 3h | 75 | 75 | Sprint 1 |
| 48 | 2.1.1.3 | Definir de interacciones posibles con el entorno | 2h | 2026-03-02 A | 2026-03-02 A | 47 | 100% |  | 2026-03-02 | 2026-03-02 | 2h |  | Diseñador | 2h | 2h | 50 | 50 | Sprint 1 |
| 49 | 2.1.1.4 | Establecer limitaciones | 2h | 2026-03-02 A | 2026-03-02 A | 48 | 100% |  | 2026-03-02 | 2026-03-02 | 2h |  | Diseñador | 2h | 2h | 50 | 50 | Sprint 1 |
| 50 | 2.1.2 | **Movimiento base** | 2d | 2026-03-02 A | 2026-03-04 A |  | 100% |  | 2026-03-02 | 2026-03-04 | 2d |  |  | 16h | 16h | 336 | 336 |  |
| 51 | 2.1.2.1 | Implementar movimiento lateral | 3h | 2026-03-02 A | 2026-03-03 A | 48 | 100% |  | 2026-03-02 | 2026-03-03 | 3h |  | Desarrollador | 3h | 3h | 63 | 63 | Sprint 1 |
| 52 | 2.1.2.2 | Implementar salto | 4h | 2026-03-03 A | 2026-03-04 A | 51 | 100% |  | 2026-03-03 | 2026-03-04 | 4h |  | Desarrollador | 4h | 4h | 84 | 84 | Sprint 1 |
| 53 | 2.1.2.3 | Implementar doble salto | 4h | 2026-03-03 A | 2026-03-04 A | 51 | 100% |  | 2026-03-03 | 2026-03-04 | 4h |  | Desarrollador | 4h | 4h | 84 | 84 | Sprint 1 |
| 54 | 2.1.2.4 | Implementar dash | 5h | 2026-03-03 A | 2026-03-04 A | 51 | 100% |  | 2026-03-03 | 2026-03-04 | 5h |  | Desarrollador | 5h | 5h | 105 | 105 | Sprint 1 |
| 55 | 2.1.3 | **Sistema de combate básico** | 1.25d | 2026-03-03 A | 2026-03-04 A |  | 100% |  | 2026-03-03 | 2026-03-04 | 1.25d |  |  | 15h | 15h | 315 | 315 |  |
| 56 | 2.1.3.1 | Implementar ataque cuerpo a cuerpo | 5h | 2026-03-03 A | 2026-03-04 A | 51 | 100% |  | 2026-03-03 | 2026-03-04 | 5h |  | Desarrollador | 5h | 5h | 105 | 105 | Sprint 1 |
| 57 | 2.1.3.2 | Implementar deteccion de impactos | 5h | 2026-03-03 A | 2026-03-04 A | 51 | 100% |  | 2026-03-03 | 2026-03-04 | 5h |  | Desarrollador | 5h | 5h | 105 | 105 | Sprint 1 |
| 58 | 2.1.3.3 | Integrar con sistema de daño | 5h | 2026-03-03 A | 2026-03-04 A | 51 | 100% |  | 2026-03-03 | 2026-03-04 | 5h |  | Desarrollador | 5h | 5h | 105 | 105 | Sprint 1 |
| 59 | 2.1.4 | **Sistema de poderes** | 2.75d | 2026-03-11 A | 2026-03-13 A |  | 100% |  | 2026-03-11 | 2026-03-13 | 2.75d |  |  | 23h | 23h | 483 | 483 |  |
| 60 | 2.1.4.1 | Implementar sistema de cambio de poderes | 5h | 2026-03-11 A | 2026-03-12 A | 68 | 100% |  | 2026-03-11 | 2026-03-12 | 5h |  | Desarrollador | 5h | 5h | 105 | 105 | Sprint 1 |
| 61 | 2.1.4.2 | Implementar poder de velocidad | 6h | 2026-03-12 A | 2026-03-13 A | 60 | 100% |  | 2026-03-12 | 2026-03-13 | 6h |  | Desarrollador | 6h | 6h | 126 | 126 | Sprint 1 |
| 62 | 2.1.4.3 | Implementar poder de fuerza | 6h | 2026-03-12 A | 2026-03-13 A | 60 | 100% |  | 2026-03-12 | 2026-03-13 | 6h |  | Desarrollador | 6h | 6h | 126 | 126 | Sprint 1 |
| 63 | 2.1.4.4 | Implementar poder de escudo | 6h | 2026-03-12 A | 2026-03-13 A | 60 | 100% |  | 2026-03-12 | 2026-03-13 | 6h |  | Desarrollador | 6h | 6h | 126 | 126 | Sprint 1 |
| 64 | 2.1.5 | **Sistema de vida y daño del jugador** | 4.75d | 2026-03-04 A | 2026-03-11 A |  | 100% |  | 2026-03-04 | 2026-03-11 | 4.75d |  |  | 19h | 19h | 399 | 399 |  |
| 65 | 2.1.5.1 | Implementar sistema de salud | 5h | 2026-03-04 A | 2026-03-05 A | 58 | 100% |  | 2026-03-04 | 2026-03-05 | 5h |  | Desarrollador | 5h | 5h | 105 | 105 | Sprint 1 |
| 66 | 2.1.5.2 | Implementar sistema de daño infligido | 5h | 2026-03-05 A | 2026-03-06 A | 65 | 100% |  | 2026-03-05 | 2026-03-06 | 5h |  | Desarrollador | 5h | 5h | 105 | 105 | Sprint 1 |
| 67 | 2.1.5.3 | Implementar invulnerabilidad temporal | 4h | 2026-03-09 A | 2026-03-09 A | 66 | 100% |  | 2026-03-09 | 2026-03-09 | 4h |  | Desarrollador | 4h | 4h | 84 | 84 | Sprint 1 |
| 68 | 2.1.5.4 | Implementar muerte y reaparición | 5h | 2026-03-10 A | 2026-03-11 A | 67 | 100% |  | 2026-03-10 | 2026-03-11 | 5h |  | Desarrollador | 5h | 5h | 105 | 105 | Sprint 1 |

| ID | WBS | Task | Duration | Start | Finish | Predecessors | Complete | Remaining | Baseline start | Baseline finish | Baseline duration | Total slack | Free slack | Resources | Work | Actual work | Cost | Actual cost | "Sprint" |
| --- | --- | --- | --- | --- | --- | --- | --- | --- | --- | --- | --- | --- | --- | --- | --- | --- | --- | --- | --- |
| 69 | 2.1.6 | **Arte y animaciones del jugador** | 5.5d | 2026-04-17 A | 2026-04-27 |  | 83% | 0.94d | 2026-04-17 | 2026-04-27 | 5.5d | 0d |  |  | 30h | 24.9h | 750 | 622.5 |  |
| 70 | 2.1.6.1 | Crear sprite base del jugador | 6h | 2026-04-17 A | 2026-04-21 A | 151 | 100% |  | 2026-04-17 | 2026-04-21 | 6h |  |  | Diseñador | 6h | 6h | 150 | 150 | Sprint 3 |
| 71 | 2.1.6.2 | Animar estado de reposo | 4h | 2026-04-21 A | 2026-04-22 A | 70 | 100% |  | 2026-04-21 | 2026-04-22 | 4h |  |  | Diseñador | 4h | 4h | 100 | 100 | Sprint 3 |
| 72 | 2.1.6.3 | Animar movimientos | 8h | 2026-04-21 A | 2026-04-23 A | 70 | 100% |  | 2026-04-21 | 2026-04-23 | 8h |  |  | Diseñador | 8h | 8h | 200 | 200 | Sprint 3 |
| 73 | 2.1.6.4 | Animar ataques | 4h | 2026-04-21 A | 2026-04-22 | 70 | 10% | 3.6h | 2026-04-21 | 2026-04-22 | 4h | 1.38d | 1d | Diseñador | 4h | 0.4h | 100 | 10 | Sprint 3 |
| 74 | 2.1.6.5 | Animar recepción de daño | 3h | 2026-04-23 A | 2026-04-23 | 73, 72, 71 | 50% | 1.5h | 2026-04-23 | 2026-04-23 | 3h | 0.2d | 0d | Diseñador | 3h | 1.5h | 75 | 37.5 | Sprint 3 |
| 75 | 2.1.6.6 | Crear variantes según poderes | 5h | 2026-04-24 A | 2026-04-27 A | 74 | 100% |  | 2026-04-24 | 2026-04-27 | 5h |  |  | Diseñador | 5h | 5h | 125 | 125 | Sprint 3 |
| 76 | 2.2 | **Sistema de enemigos comunes** | 43.25d | 2026-02-27 A | 2026-04-29 |  | 74% | 11.11d | 2026-02-27 | 2026-04-29 | 43.25d | 0.2d |  |  | 102h | 75.8h | 2,306 | 1,651 |  |
| 77 | 2.2.1 | **Diseño de arquetipos** | 2.75d | 2026-02-27 A | 2026-03-03 A |  | 100% |  | 2026-02-27 | 2026-03-03 | 2.75d |  |  |  | 11h | 11h | 275 | 275 |  |
| 78 | 2.2.1.1 | Diseñar enemigos de cada nivel | 6h | 2026-02-27 A | 2026-03-02 A | 46 | 100% |  | 2026-02-27 | 2026-03-02 | 6h |  |  | Diseñador | 6h | 6h | 150 | 150 | Sprint 1 |
| 79 | 2.2.1.2 | Especificar comportamientos | 3h | 2026-03-02 A | 2026-03-03 A | 78 | 100% |  | 2026-03-02 | 2026-03-03 | 3h |  |  | Diseñador | 3h | 3h | 75 | 75 | Sprint 1 |
| 80 | 2.2.1.3 | Definir estadísticas base | 2h | 2026-03-03 A | 2026-03-03 A | 79 | 100% |  | 2026-03-03 | 2026-03-03 | 2h |  |  | Diseñador | 2h | 2h | 50 | 50 | Sprint 1 |
| 81 | 2.2.2 | **Programacion de IA básica** | 10.5d | 2026-03-04 A | 2026-03-18 A |  | 100% |  | 2026-03-04 | 2026-03-18 | 10.5d |  |  |  | 42h | 42h | 882 | 882 |  |
| 82 | 2.2.2.1 | Implementar detección del jugador | 5h | 2026-03-09 A | 2026-03-10 A | 83 | 100% |  | 2026-03-09 | 2026-03-10 | 5h |  |  | Desarrollador | 5h | 5h | 105 | 105 | Sprint 1 |
| 83 | 2.2.2.2 | Implementar movimiento | 12h | 2026-03-04 A | 2026-03-06 A | 80 | 100% |  | 2026-03-04 | 2026-03-06 | 12h |  |  | Desarrollador | 12h | 12h | 252 | 252 | Sprint 1 |
| 84 | 2.2.2.3 | Implementar ataques | 20h | 2026-03-10 A | 2026-03-17 A | 82 | 100% |  | 2026-03-10 | 2026-03-17 | 20h |  |  | Desarrollador | 20h | 20h | 420 | 420 | Sprint 1 |
| 85 | 2.2.2.4 | Implementar gestión de estados | 5h | 2026-03-17 A | 2026-03-18 A | 84, 165 | 100% |  | 2026-03-17 | 2026-03-18 | 5h |  |  | Desarrollador | 5h | 5h | 105 | 105 | Sprint 1 |
| 86 | 2.2.3 | **Sistema de spawn y despawn** | 2d | 2026-03-18 A | 2026-03-20 A |  | 100% |  | 2026-03-18 | 2026-03-20 | 2d |  |  |  | 8h | 8h | 168 | 168 |  |
| 87 | 2.2.3.1 | Implementar sistemas de spawn de enemigos | 4h | 2026-03-18 A | 2026-03-19 A | 85 | 100% |  | 2026-03-18 | 2026-03-19 | 4h |  |  | Desarrollador | 4h | 4h | 84 | 84 | Sprint 1 |
| 88 | 2.2.3.2 | Implementar despawn automático de enemigos | 4h | 2026-03-19 A | 2026-03-20 A | 87 | 100% |  | 2026-03-19 | 2026-03-20 | 4h |  |  | Desarrollador | 4h | 4h | 84 | 84 | Sprint 1 |
| 89 | 2.2.4 | **Sistema de vida y daño de los enemigos** | 18.25d | 2026-03-20 A | 2026-04-15 A |  | 100% |  | 2026-03-20 | 2026-04-15 | 18.25d |  |  |  | 11h | 11h | 231 | 231 |  |
| 90 | 2.2.4.1 | Implementar estadísticas de enemigos de nivel 1 | 3h | 2026-03-20 A | 2026-03-23 A | 88 | 100% |  | 2026-03-20 | 2026-03-23 | 3h |  |  | Desarrollador | 3h | 3h | 63 | 63 | Sprint 1 |
| 91 | 2.2.4.2 | Implementar estadísticas de enemigos de nivel 2 | 3h | 2026-03-25 A | 2026-03-25 A | 39 | 100% |  | 2026-03-25 | 2026-03-25 | 3h |  |  | Desarrollador | 3h | 3h | 63 | 63 | Sprint 2 |
| 92 | 2.2.4.3 | Implementar estadísticas de enemigos de nivel 3 | 3h | 2026-04-14 A | 2026-04-15 A | 40 | 100% |  | 2026-04-14 | 2026-04-15 | 3h |  |  | Desarrollador | 3h | 3h | 63 | 63 | Sprint 3 |
| 93 | 2.2.4.4 | Implementar estadísticas de enemigos de nivel final | 2h | 2026-04-15 A | 2026-04-15 A | 92 | 100% |  | 2026-04-15 | 2026-04-15 | 2h |  |  | Desarrollador | 2h | 2h | 42 | 42 | Sprint 3 |

| ID | WBS | Task | Duration | Start | Finish | Predecessors | Complete | Remaining | Baseline start | Baseline finish | Baseline duration | Total slack | Free slack | Resources | Work | Actual work | Cost | Actual cost | "Sprint" |
| --- | --- | --- | --- | --- | --- | --- | --- | --- | --- | --- | --- | --- | --- | --- | --- | --- | --- | --- | --- |
| 94 | 2.2.5 | **Arte y animaciones de enemigos** | 3.5d | 2026-04-24 A | 2026-04-29 |  | 13% | 3.06d | 2026-04-24 | 2026-04-29 | 3.5d | 0.2d |  |  | 30h | 3.8h | 750 | 95 |  |
| 95 | 2.2.5.1 | Crear sprites y animar enemigos de nivel 1 | 8h | 2026-04-24 A | 2026-04-27 | 74 | 20% | 6.4h | 2026-04-24 | 2026-04-27 | 8h | 0.15d | 0d | Diseñador | 8h | 1.6h | 200 | 40 | Sprint 3 |
| 96 | 2.2.5.2 | Crear sprites y animar enemigos de nivel 2 | 8h | 2026-04-24 A | 2026-04-27 | 74 | 10% | 7.2h | 2026-04-24 | 2026-04-27 | 8h | 0.15d | 0d | Diseñador | 8h | 0.8h | 200 | 20 | Sprint 3 |
| 97 | 2.2.5.3 | Crear sprites y animar enemigos de nivel 3 | 8h | 2026-04-24 A | 2026-04-27 | 74 | 10% | 7.2h | 2026-04-24 | 2026-04-27 | 8h | 0.15d | 0d | Diseñador | 8h | 0.8h | 200 | 20 | Sprint 3 |
| 98 | 2.2.5.4 | Crear sprites y animar enemigos de nivel final | 6h | 2026-04-28 A | 2026-04-29 | 97, 96, 95 | 10% | 5.4h | 2026-04-28 | 2026-04-29 | 6h | 0.2d | 0d | Diseñador | 6h | 0.6h | 150 | 15 | Sprint 3 |
| 99 | 2.3 | **Sistema de mini-jefes adaptativo** | 25.5d | 2026-03-25 A | 2026-04-30 |  | 89% | 2.93d | 2026-03-25 | 2026-04-30 | 25.5d | 14.75d |  |  | 98h | 86.75h | 2,150 | 1,879.75 |  |
| 100 | 2.3.1 | **Diseño mecánico** | 11.5d | 2026-03-25 A | 2026-04-10 |  | 88% | 1.44d | 2026-03-25 | 2026-04-10 | 11.5d | 28.75d |  |  | 16h | 14h | 360 | 318 |  |
| 101 | 2.3.1.1 | Definir patrones de ataque base de Umbra | 6h | 2026-03-25 A | 2026-03-27 A | 91 | 100% |  | 2026-03-25 | 2026-03-27 | 6h |  |  | Diseñador | 6h | 6h | 150 | 150 | Sprint 2 |
| 102 | 2.3.1.2 | Implementar recompensas tras derrota de Umbra | 10h | 2026-04-07 A | 2026-04-10 | 104, 105 | 80% | 2h | 2026-04-07 | 2026-04-10 | 10h | 28.75d |  | Desarrollador | 10h | 8h | 210 | 168 | Sprint 3 |
| 103 | 2.3.2 | **Implementación del modelo de IA** | 7.5d | 2026-03-27 A | 2026-04-07 A |  | 100% |  | 2026-03-27 | 2026-04-07 | 7.5d |  |  |  | 45h | 45h | 945 | 945 |  |
| 104 | 2.3.2.1 | Desarrollar modelo de IA para aprendizaje | 30h | 2026-03-27 A | 2026-04-07 A | 101 | 100% |  | 2026-03-27 | 2026-04-07 | 30h |  |  | Desarrollador | 30h | 30h | 630 | 630 | Sprint 2 |
| 105 | 2.3.2.2 | Implementar modelo en la toma de decisiones | 15h | 2026-03-27 A | 2026-04-01 A | 101 | 100% |  | 2026-03-27 | 2026-04-01 | 15h |  |  | Desarrollador | 15h | 15h | 315 | 315 | Sprint 2 |
| 106 | 2.3.3 | **Sistema de evolución** | 3d | 2026-03-30 A | 2026-04-02 |  | 96% | 0.11d | 2026-03-30 | 2026-04-02 | 3d | 34.5d |  |  | 20h | 19.25h | 420 | 404.25 |  |
| 107 | 2.3.3.1 | Implementar modificación de atributos | 5h | 2026-03-30 A | 2026-03-31 A | 117 | 100% |  | 2026-03-30 | 2026-03-31 | 5h |  |  | Desarrollador | 5h | 5h | 105 | 105 | Sprint 2 |
| 108 | 2.3.3.2 | Implementar cambio de comportamiento | 12h | 2026-03-30 A | 2026-04-02 A | 117 | 100% |  | 2026-03-30 | 2026-04-02 | 12h |  |  | Desarrollador | 12h | 12h | 252 | 252 | Sprint 2 |
| 109 | 2.3.3.3 | Implementar condiciones de activación | 3h | 2026-03-30 A | 2026-03-31 | 117 | 75% | 0.75h | 2026-03-30 | 2026-03-31 | 3h | 36.75d |  | Desarrollador | 3h | 2.25h | 63 | 47.25 | Sprint 3 |
| 110 | 2.3.4 | **Arte y animaciones del mini-feje** | 2.25d | 2026-04-28 A | 2026-04-30 |  | 50% | 1.12d | 2026-04-28 | 2026-04-30 | 2.25d | 14.75d |  |  | 17h | 8.5h | 425 | 212.5 |  |
| 111 | 2.3.4.1 | Crear Sprite base de Umbra | 5h | 2026-04-28 A | 2026-04-29 | 95 | 50% | 2.5h | 2026-04-28 | 2026-04-29 | 5h | 15.75d |  | Diseñador | 5h | 2.5h | 125 | 62.5 | Sprint 3 |
| 112 | 2.3.4.2 | Crear variantes evolutivas | 3h | 2026-04-28 A | 2026-04-28 | 95 | 50% | 1.5h | 2026-04-28 | 2026-04-28 | 3h | 16.25d |  | Diseñador | 3h | 1.5h | 75 | 37.5 | Sprint 3 |
| 113 | 2.3.4.3 | Animar ataques, daño y derrota | 9h | 2026-04-28 A | 2026-04-30 | 95 | 50% | 4.5h | 2026-04-28 | 2026-04-30 | 9h | 14.75d |  | Diseñador | 9h | 4.5h | 225 | 112.5 | Sprint 3 |
| 114 | 2.4 | **Sistema jefes** | 29.25d | 2026-03-23 A | 2026-05-01 |  | 70% | 8.78d | 2026-03-23 | 2026-05-01 | 29.25d | 0.75d |  |  | 96h | 67.2h | 2,052 | 1,447.2 |  |
| 115 | 2.4.1 | **Diseño de patrones** | 21.25d | 2026-03-23 A | 2026-04-21 A |  | 100% |  | 2026-03-23 | 2026-04-21 | 21.25d |  |  |  | 9h | 9h | 225 | 225 |  |
| 116 | 2.4.1.1 | Definir patrones del Guardian de Hielo | 2h | 2026-03-23 A | 2026-03-23 A | 90 | 100% |  | 2026-03-23 | 2026-03-23 | 2h |  |  | Diseñador | 2h | 2h | 50 | 50 | Sprint 1 |
| 117 | 2.4.1.2 | Definir patrones del Coloso de Ceniza | 2h | 2026-03-30 A | 2026-03-30 A | 121 | 100% |  | 2026-03-30 | 2026-03-30 | 2h |  |  | Diseñador | 2h | 2h | 50 | 50 | Sprint 2 |
| 118 | 2.4.1.3 | Definir patrones de la Tempestad Dorada | 2h | 2026-04-14 A | 2026-04-14 A | 40 | 100% |  | 2026-04-14 | 2026-04-14 | 2h |  |  | Diseñador | 2h | 2h | 50 | 50 | Sprint 3 |
| 119 | 2.4.1.4 | Definir patrones del Vacío | 3h | 2026-04-20 A | 2026-04-21 A | 123 | 100% |  | 2026-04-20 | 2026-04-21 | 3h |  |  | Diseñador | 3h | 3h | 75 | 75 | Sprint 3 |

| ID | WBS | Task | Duration | Start | Finish | Predecessors | Complete | Remaining | Baseline start | Baseline finish | Baseline duration | Total slack | Free slack | Resources | Work | Actual work | Cost | Actual cost | "Sprint" |
| --- | --- | --- | --- | --- | --- | --- | --- | --- | --- | --- | --- | --- | --- | --- | --- | --- | --- | --- | --- |
| 120 | 2.4.2 | **Programación de comportamiento** | 22.5d | 2026-03-25 A | 2026-04-24 A |  | 100% |  | 2026-03-25 | 2026-04-24 | 22.5d |  |  |  | 46h | 46h | 966 | 966 |  |
| 121 | 2.4.2.1 | Implementar al Guardian de Hielo | 12h | 2026-03-25 A | 2026-03-27 A | 39 | 100% |  | 2026-03-25 | 2026-03-27 | 12h |  |  | Desarrollador | 12h | 12h | 252 | 252 | Sprint 2 |
| 122 | 2.4.2.2 | Implementar al Coloso de Ceniza | 10h | 2026-04-03 A | 2026-04-07 A | 127 | 100% |  | 2026-04-03 | 2026-04-07 | 10h |  |  | Desarrollador | 10h | 10h | 210 | 210 | Sprint 2 |
| 123 | 2.4.2.3 | Implementar a la Tempestad Dorada | 12h | 2026-04-15 A | 2026-04-20 A | 128 | 100% |  | 2026-04-15 | 2026-04-20 | 12h |  |  | Desarrollador | 12h | 12h | 252 | 252 | Sprint 3 |
| 124 | 2.4.2.4 | Implementar al Vacío | 12h | 2026-04-21 A | 2026-04-24 A | 119 | 100% |  | 2026-04-21 | 2026-04-24 | 12h |  |  | Desarrollador | 12h | 12h | 252 | 252 | Sprint 3 |
| 125 | 2.4.3 | **Sistema de puntos débiles** | 17d | 2026-03-23 A | 2026-04-15 A |  | 100% |  | 2026-03-23 | 2026-04-15 | 17d |  |  |  | 9h | 9h | 189 | 189 |  |
| 126 | 2.4.3.1 | Implementar zonas de vulnerabilidad del Guardian de Hielo | 3h | 2026-03-23 A | 2026-03-24 A | 116 | 100% |  | 2026-03-23 | 2026-03-24 | 3h |  |  | Desarrollador | 3h | 3h | 63 | 63 | Sprint 1 |
| 127 | 2.4.3.2 | Implementar zonas de vulnerabilidad del Coloso de Ceniza | 3h | 2026-04-02 A | 2026-04-03 A | 108 | 100% |  | 2026-04-02 | 2026-04-03 | 3h |  |  | Desarrollador | 3h | 3h | 63 | 63 | Sprint 2 |
| 128 | 2.4.3.3 | Implementar zonas de vulnerabilidad de la Tempestad Dorada | 3h | 2026-04-15 A | 2026-04-15 A | 118 | 100% |  | 2026-04-15 | 2026-04-15 | 3h |  |  | Desarrollador | 3h | 3h | 63 | 63 | Sprint 3 |
| 129 | 2.4.4 | **Arte y animaciones de los jefes** | 2d | 2026-04-29 A | 2026-05-01 |  | 10% | 1.8d | 2026-04-29 | 2026-05-01 | 2d | 0.75d |  |  | 32h | 3.2h | 672 | 67.2 |  |
| 130 | 2.4.4.1 | Crear sprite y animaciones del Guardian de Hielo | 8h | 2026-04-29 A | 2026-05-01 | 98 | 10% | 7.2h | 2026-04-29 | 2026-05-01 | 8h | 0.75d | 0d | Desarrollador | 8h | 0.8h | 168 | 16.8 | Sprint 3 |
| 131 | 2.4.4.2 | Crear sprite y animaciones del Coloso de Ceniza | 8h | 2026-04-29 A | 2026-05-01 | 98 | 10% | 7.2h | 2026-04-29 | 2026-05-01 | 8h | 0.75d | 0d | Desarrollador | 8h | 0.8h | 168 | 16.8 | Sprint 3 |
| 132 | 2.4.4.3 | Crear sprite y animaciones de la Tempestad Dorada | 8h | 2026-04-29 A | 2026-05-01 | 98 | 10% | 7.2h | 2026-04-29 | 2026-05-01 | 8h | 0.75d | 0d | Desarrollador | 8h | 0.8h | 168 | 16.8 | Sprint 3 |
| 133 | 2.4.4.4 | Crear sprite y animaciones del Vacío | 8h | 2026-04-29 A | 2026-05-01 | 98 | 10% | 7.2h | 2026-04-29 | 2026-05-01 | 8h | 0.75d | 0d | Desarrollador | 8h | 0.8h | 168 | 16.8 | Sprint 3 |
| 134 | 2.5 | **Sistema de niveles** | 43.5d | 2026-03-04 A | 2026-05-04 |  | 84% | 7d | 2026-03-04 | 2026-05-04 | 43.5d | 12d |  |  | 105h | 88.1h | 2,397 | 1,991.7 |  |
| 135 | 2.5.1 | **Diseño de layout** | 32.75d | 2026-03-04 A | 2026-04-20 |  | 93% | 2.18d | 2026-03-04 | 2026-04-20 | 32.75d | 22.75d |  |  | 18h | 16.8h | 450 | 420 |  |
| 136 | 2.5.1.1 | Diseñar layout del nivel tutorial | 2h | 2026-03-04 A | 2026-03-04 A | 58 | 100% |  | 2026-03-04 | 2026-03-04 | 2h |  |  | Diseñador | 2h | 2h | 50 | 50 | Sprint 1 |
| 137 | 2.5.1.2 | Diseñar layout del nivel 1 | 4h | 2026-03-06 A | 2026-03-09 A | 142 | 100% |  | 2026-03-06 | 2026-03-09 | 4h |  |  | Diseñador | 4h | 4h | 100 | 100 | Sprint 1 |
| 138 | 2.5.1.3 | Diseñar layout del nivel 2 | 4h | 2026-04-07 A | 2026-04-08 A | 122 | 100% |  | 2026-04-07 | 2026-04-08 | 4h |  |  | Diseñador | 4h | 4h | 100 | 100 | Sprint 2 |
| 139 | 2.5.1.4 | Diseñar layout del nivel 3 | 4h | 2026-04-15 A | 2026-04-16 A | 93 | 100% |  | 2026-04-15 | 2026-04-16 | 4h |  |  | Diseñador | 4h | 4h | 100 | 100 | Sprint 3 |
| 140 | 2.5.1.5 | Diseñar layout del nivel final | 4h | 2026-04-17 A | 2026-04-20 | 145 | 70% | 1.2h | 2026-04-17 | 2026-04-20 | 4h | 22.75d |  | Diseñador | 4h | 2.8h | 100 | 70 | Sprint 3 |
| 141 | 2.5.2 | **Implementación de tilemaps** | 32.75d | 2026-03-05 A | 2026-04-20 |  | 92% | 2.62d | 2026-03-05 | 2026-04-20 | 32.75d | 22.25d |  |  | 30h | 27.6h | 630 | 579.6 |  |
| 142 | 2.5.2.1 | Implementar tilemap del nivel tutorial | 6h | 2026-03-05 A | 2026-03-06 A | 136 | 100% |  | 2026-03-05 | 2026-03-06 | 6h |  |  | Desarrollador | 6h | 6h | 126 | 126 | Sprint 1 |
| 143 | 2.5.2.2 | Implementar tilemap del nivel 1 | 6h | 2026-03-09 A | 2026-03-10 A | 137 | 100% |  | 2026-03-09 | 2026-03-10 | 6h |  |  | Desarrollador | 6h | 6h | 126 | 126 | Sprint 1 |
| 144 | 2.5.2.3 | Implementar tilemap del nivel 2 | 6h | 2026-04-08 A | 2026-04-10 A | 138 | 100% |  | 2026-04-08 | 2026-04-10 | 6h |  |  | Desarrollador | 6h | 6h | 126 | 126 | Sprint 3 |
| 145 | 2.5.2.4 | Implementar tilemap del nivel 3 | 6h | 2026-04-15 A | 2026-04-17 A | 93 | 100% |  | 2026-04-15 | 2026-04-17 | 6h |  |  | Desarrollador | 6h | 6h | 126 | 126 | Sprint 3 |
| 146 | 2.5.2.5 | Implementar tilemap del nivel final | 6h | 2026-04-17 A | 2026-04-20 | 145 | 60% | 2.4h | 2026-04-17 | 2026-04-20 | 6h | 22.25d |  | Desarrollador | 6h | 3.6h | 126 | 75.6 | Sprint 3 |

| ID | WBS | Task | Duration | Start | Finish | Predecessors | Complete | Remaining | Baseline start | Baseline finish | Baseline duration | Total slack | Free slack | Resources | Work | Actual work | Cost | Actual cost | "Sprint" |
| --- | --- | --- | --- | --- | --- | --- | --- | --- | --- | --- | --- | --- | --- | --- | --- | --- | --- | --- | --- |
| 147 | 2.5.3 | **Integración de enemigos y jefes** | 27.75d | 2026-03-11 A | 2026-04-17 |  | 96% | 1.01d | 2026-03-11 | 2026-04-17 | 27.75d | 23.25d |  |  | 11h | 10.6h | 231 | 222.6 |  |
| 148 | 2.5.3.1 | Colocar enemigos del nivel 1 | 2h | 2026-03-11 A | 2026-03-11 A | 143 | 100% |  | 2026-03-11 | 2026-03-11 | 2h |  |  | Desarrollador | 2h | 2h | 42 | 42 | Sprint 1 |
| 149 | 2.5.3.2 | Colocar enemigos del nivel 2 | 2h | 2026-04-13 A | 2026-04-13 A | 166 | 100% |  | 2026-04-13 | 2026-04-13 | 2h |  |  | Desarrollador | 2h | 2h | 42 | 42 | Sprint 2 |
| 150 | 2.5.3.3 | Colocar enemigos del nivel 3 | 2h | 2026-04-15 A | 2026-04-16 A | 93 | 100% |  | 2026-04-15 | 2026-04-16 | 2h |  |  | Desarrollador | 2h | 2h | 42 | 42 | Sprint 3 |
| 151 | 2.5.3.4 | Colocar enemigos del nivel final | 2h | 2026-04-17 A | 2026-04-17 | 145 | 80% | 0.4h | 2026-04-17 | 2026-04-17 | 2h | 23.25d |  | Desarrollador | 2h | 1.6h | 42 | 33.6 | Sprint 3 |
| 152 | 2.5.3.5 | Configurar triggers de jefes (Nivel 1) | 1h | 2026-03-24 A | 2026-03-24 A | 126 | 100% |  | 2026-03-24 | 2026-03-24 | 1h |  |  | Desarrollador | 1h | 1h | 21 | 21 | Sprint 1 |
| 153 | 2.5.3.6 | Configurar triggers de jefes (Nivel 2) | 1h | 2026-04-13 A | 2026-04-13 A | 149 | 100% |  | 2026-04-13 | 2026-04-13 | 1h |  |  | Desarrollador | 1h | 1h | 21 | 21 | Sprint 2 |
| 154 | 2.5.3.7 | Configurar triggers de jefes (Nivel 3) | 0.5h | 2026-04-15 A | 2026-04-15 A | 93 | 100% |  | 2026-04-15 | 2026-04-15 | 0.5h |  |  | Desarrollador | 0.5h | 0.5h | 10.5 | 10.5 | Sprint 3 |
| 155 | 2.5.3.8 | Configurar triggers de jefes (Nivel final) | 0.5h | 2026-04-15 A | 2026-04-15 A | 93 | 100% |  | 2026-04-15 | 2026-04-15 | 0.5h |  |  | Desarrollador | 0.5h | 0.5h | 10.5 | 10.5 | Sprint 3 |
| 156 | 2.5.4 | **Implementación de objetos y obstáculos** | 27.5d | 2026-03-11 A | 2026-04-17 |  | 91% | 2.58d | 2026-03-11 | 2026-04-17 | 27.5d | 23d |  |  | 16h | 14.5h | 336 | 304.5 |  |
| 157 | 2.5.4.1 | Implementar trampas (Nivel 1) | 1h | 2026-03-11 A | 2026-03-11 A | 148 | 100% |  | 2026-03-11 | 2026-03-11 | 1h |  |  | Desarrollador | 1h | 1h | 21 | 21 | Sprint 1 |
| 158 | 2.5.4.2 | Implementar trampas (Nivel 2) | 1h | 2026-04-10 A | 2026-04-10 A | 144 | 100% |  | 2026-04-10 | 2026-04-10 | 1h |  |  | Desarrollador | 1h | 1h | 21 | 21 | Sprint 2 |
| 159 | 2.5.4.3 | Implementar trampas (Nivel 3) | 1h | 2026-04-15 A | 2026-04-15 A | 93 | 100% |  | 2026-04-15 | 2026-04-15 | 1h |  |  | Desarrollador | 1h | 1h | 21 | 21 | Sprint 3 |
| 160 | 2.5.4.4 | Implementar trampas (Nivel final) | 1h | 2026-04-17 A | 2026-04-17 | 145 | 50% | 0.5h | 2026-04-17 | 2026-04-17 | 1h | 0.33d | 0d | Desarrollador | 1h | 0.5h | 21 | 10.5 | Sprint 3 |
| 161 | 2.5.4.5 | Implementar plataformas especiales (Nivel 1) | 2h | 2026-03-11 A | 2026-03-12 A | 157 | 100% |  | 2026-03-11 | 2026-03-12 | 2h |  |  | Desarrollador | 2h | 2h | 42 | 42 | Sprint 1 |
| 162 | 2.5.4.6 | Implementar plataformas especiales (Nivel 2) | 2h | 2026-04-10 A | 2026-04-10 A | 158, 102 | 100% |  | 2026-04-10 | 2026-04-10 | 2h |  |  | Desarrollador | 2h | 2h | 42 | 42 | Sprint 2 |
| 163 | 2.5.4.7 | Implementar plataformas especiales (Nivel 3) | 2h | 2026-04-15 A | 2026-04-16 A | 93 | 100% |  | 2026-04-15 | 2026-04-16 | 2h |  |  | Desarrollador | 2h | 2h | 42 | 42 | Sprint 3 |
| 164 | 2.5.4.8 | Implementar plataformas especiales (Nivel final) | 2h | 2026-04-17 A | 2026-04-17 | 160, 145 | 65% | 0.7h | 2026-04-17 | 2026-04-17 | 2h | 23d |  | Desarrollador | 2h | 1.3h | 42 | 27.3 | Sprint 3 |
| 165 | 2.5.4.9 | Implementar zonas de muerte instantánea (Nivel 1) | 1h | 2026-03-12 A | 2026-03-12 A | 161 | 100% |  | 2026-03-12 | 2026-03-12 | 1h |  |  | Desarrollador | 1h | 1h | 21 | 21 | Sprint 1 |
| 166 | 2.5.4.10 | Implementar zonas de muerte instantánea (Nivel 2) | 1h | 2026-04-13 A | 2026-04-13 A | 162 | 100% |  | 2026-04-13 | 2026-04-13 | 1h |  |  | Desarrollador | 1h | 1h | 21 | 21 | Sprint 2 |
| 167 | 2.5.4.11 | Implementar zonas de muerte instantánea (Nivel 3) | 1h | 2026-04-15 A | 2026-04-15 A | 93 | 100% |  | 2026-04-15 | 2026-04-15 | 1h |  |  | Desarrollador | 1h | 1h | 21 | 21 | Sprint 3 |
| 168 | 2.5.4.12 | Implementar zonas de muerte instantánea (Nivel final) | 1h | 2026-04-17 A | 2026-04-17 | 145 | 70% | 0.3h | 2026-04-17 | 2026-04-17 | 1h | 23.5d |  | Desarrollador | 1h | 0.7h | 21 | 14.7 | Sprint 3 |
| 169 | 2.5.5 | **Arte y animación del entorno** | 1.5d | 2026-05-01 A | 2026-05-04 |  | 62% | 0.57d | 2026-05-01 | 2026-05-04 | 1.5d | 12d |  |  | 30h | 18.6h | 750 | 465 |  |
| 170 | 2.5.5.1 | Diseñar fondo y efectos del nivel tutorial | 6h | 2026-05-01 | 2026-05-04 | 133, 132, 131, 130 |  |  | 2026-05-01 | 2026-05-04 | 5h | 12d |  | Diseñador | 6h |  | 150 |  | Sprint 4 |
| 171 | 2.5.5.2 | Diseñar fondo y efectos del nivel 1 | 6h | 2026-05-01 A | 2026-05-04 | 130, 131, 132, 133 | 90% | 0.6h | 2026-05-01 | 2026-05-04 | 6h | 12d |  | Diseñador | 6h | 5.4h | 150 | 135 | Sprint 3 |
| 172 | 2.5.5.3 | Diseñar fondo y efectos del nivel 2 | 6h | 2026-05-01 A | 2026-05-04 | 130, 131, 132, 133 | 80% | 1.2h | 2026-05-01 | 2026-05-04 | 6h | 12d |  | Diseñador | 6h | 4.8h | 150 | 120 | Sprint 3 |
| 173 | 2.5.5.4 | Diseñar fondo y efectos del nivel 3 | 6h | 2026-05-01 A | 2026-05-04 | 130, 131, 132, 133 | 90% | 0.6h | 2026-05-01 | 2026-05-04 | 6h | 12d |  | Diseñador | 6h | 5.4h | 150 | 135 | Sprint 3 |
| 174 | 2.5.5.5 | Diseñar fondo y efectos del nivel final | 6h | 2026-05-01 A | 2026-05-04 | 130, 131, 132, 133 | 50% | 3h | 2026-05-01 | 2026-05-04 | 6h | 12d |  | Diseñador | 6h | 3h | 150 | 75 | Sprint 3 |

| ID | WBS | Task | Duration | Start | Finish | Predecessors | Complete | Remaining | Baseline start | Baseline finish | Baseline duration | Total slack | Resources | Work | Actual work | Cost | Actual cost | "Sprint" |
| --- | --- | --- | --- | --- | --- | --- | --- | --- | --- | --- | --- | --- | --- | --- | --- | --- | --- | --- |
| 175 | 3 | **Sistemas globales** | 26d | 2026-04-13 A | 2026-05-19 |  | 28% | 18.63d | 2026-04-13 | 2026-05-19 | 26d | 1.75d |  | 247h | 70h | 5,283 | 1,550 |  |
| 176 | 3.1 | **Sistema de interfaz y menús** | 19.75d | 2026-04-13 A | 2026-05-08 A |  | 100% |  | 2026-04-13 | 2026-05-08 | 19.75d |  |  | 70h | 70h | 1,550 | 1,550 |  |
| 177 | 3.1.1 | **HUD** | 1.5d | 2026-04-13 A | 2026-04-14 A |  | 100% |  | 2026-04-13 | 2026-04-14 | 1.5d |  |  | 16h | 16h | 336 | 336 |  |
| 178 | 3.1.1.1 | Implementar indicadores de salud | 6h | 2026-04-13 A | 2026-04-14 A | 166 | 100% |  | 2026-04-13 | 2026-04-14 | 6h |  | Desarrollador | 6h | 6h | 126 | 126 | Sprint 2 |
| 179 | 3.1.1.2 | Implementar indicador de poderes | 6h | 2026-04-13 A | 2026-04-14 A | 166 | 100% |  | 2026-04-13 | 2026-04-14 | 6h |  | Desarrollador | 6h | 6h | 126 | 126 | Sprint 2 |
| 180 | 3.1.1.3 | Implementar recolección de objetos clave | 4h | 2026-04-13 A | 2026-04-14 A | 166 | 100% |  | 2026-04-13 | 2026-04-14 | 4h |  | Desarrollador | 4h | 4h | 84 | 84 | Sprint 2 |
| 181 | 3.1.2 | **Pantalla de inicio** | 1.5d | 2026-05-05 A | 2026-05-06 A |  | 100% |  | 2026-05-05 | 2026-05-06 | 1.5d |  |  | 10h | 10h | 226 | 226 |  |
| 182 | 3.1.2.1 | Diseñar interfaz de inicio | 4h | 2026-05-05 A | 2026-05-05 A | 171, 172, 173, 174 | 100% |  | 2026-05-05 | 2026-05-05 | 4h |  | Diseñador | 4h | 4h | 100 | 100 | Sprint 3 |
| 183 | 3.1.2.2 | Programar navegación de la pantalla de inicio | 6h | 2026-05-05 A | 2026-05-06 A | 171, 172, 173, 174 | 100% |  | 2026-05-05 | 2026-05-06 | 6h |  | Desarrollador | 6h | 6h | 126 | 126 | Sprint 3 |
| 184 | 3.1.3 | **Pantalla de pausa** | 1d | 2026-05-06 A | 2026-05-07 A |  | 100% |  | 2026-05-06 | 2026-05-07 | 1d |  |  | 12h | 12h | 268 | 268 |  |
| 185 | 3.1.3.1 | Diseñar interfaz de pausa | 4h | 2026-05-06 A | 2026-05-07 A | 182, 183 | 100% |  | 2026-05-06 | 2026-05-07 | 4h |  | Diseñador | 4h | 4h | 100 | 100 | Sprint 3 |
| 186 | 3.1.3.2 | Programar lógica de pausa | 4h | 2026-05-06 A | 2026-05-07 A | 182, 183 | 100% |  | 2026-05-06 | 2026-05-07 | 4h |  | Desarrollador | 4h | 4h | 84 | 84 | Sprint 3 |
| 187 | 3.1.3.3 | Programar navegación de menú | 4h | 2026-05-06 A | 2026-05-07 A | 182, 183 | 100% |  | 2026-05-06 | 2026-05-07 | 4h |  | Desarrollador | 4h | 4h | 84 | 84 | Sprint 3 |
| 188 | 3.1.4 | **Pantalla de ajustes** | 2.5d | 2026-05-06 A | 2026-05-08 A |  | 100% |  | 2026-05-06 | 2026-05-08 | 2.5d |  |  | 13h | 13h | 285 | 285 |  |
| 189 | 3.1.4.1 | Diseñar interfaz de ajustes | 3h | 2026-05-07 A | 2026-05-08 A | 185, 186, 187 | 100% |  | 2026-05-07 | 2026-05-08 | 3h |  | Diseñador | 3h | 3h | 75 | 75 | Sprint 3 |
| 190 | 3.1.4.2 | Programar lógica de las configuraciones | 10h | 2026-05-06 A | 2026-05-08 A | 183 | 100% |  | 2026-05-06 | 2026-05-08 | 10h |  | Desarrollador | 10h | 10h | 210 | 210 | Sprint 3 |
| 191 | 3.1.5 | **Pantalla de carga** | 1.5d | 2026-05-07 A | 2026-05-08 A |  | 100% |  | 2026-05-07 | 2026-05-08 | 1.5d |  |  | 11h | 11h | 255 | 255 |  |
| 192 | 3.1.5.1 | Diseñar pantalla de carga | 6h | 2026-05-07 A | 2026-05-08 A | 187 | 100% |  | 2026-05-07 | 2026-05-08 | 6h |  | Diseñador | 6h | 6h | 150 | 150 | Sprint 3 |
| 193 | 3.1.5.2 | Implementar consejos de juego | 5h | 2026-05-07 A | 2026-05-08 A | 187 | 100% |  | 2026-05-07 | 2026-05-08 | 5h |  | Desarrollador | 5h | 5h | 105 | 105 | Sprint 3 |
| 194 | 3.1.6 | **Pantalla de créditos** | 1.25d | 2026-05-07 A | 2026-05-08 A |  | 100% |  | 2026-05-07 | 2026-05-08 | 1.25d |  |  | 8h | 8h | 180 | 180 |  |
| 195 | 3.1.6.1 | Diseñar pantalla de créditos | 3h | 2026-05-07 A | 2026-05-08 A | 187 | 100% |  | 2026-05-07 | 2026-05-08 | 3h |  | Diseñador | 3h | 3h | 75 | 75 | Sprint 3 |
| 196 | 3.1.6.2 | Programar lógica de la pantalla de créditos | 5h | 2026-05-07 A | 2026-05-08 A | 187 | 100% |  | 2026-05-07 | 2026-05-08 | 5h |  | Desarrollador | 5h | 5h | 105 | 105 | Sprint 3 |
| 197 | 3.2 | **Sistema de guardado y progresión** | 3.5d | 2026-05-13 | 2026-05-19 |  |  |  | 2026-05-13 | 2026-05-19 | 3.5d | 0d |  | 46h |  | 966 |  |  |
| 198 | 3.2.1 | **Sistema de guardado automático** | 2d | 2026-05-13 | 2026-05-15 |  |  |  | 2026-05-13 | 2026-05-15 | 2d | 0d |  | 14h |  | 294 |  |  |
| 199 | 3.2.1.1 | Implementar lógica de guardado | 8h | 2026-05-13 | 2026-05-15 | 262 |  |  | 2026-05-13 | 2026-05-15 | 8h | 3.25d | Desarrollador | 8h |  | 168 |  | Sprint 4 |
| 200 | 3.2.1.2 | Implementar indicador visual | 2h | 2026-05-13 | 2026-05-14 | 262 |  |  | 2026-05-13 | 2026-05-14 | 2h | 0d | Desarrollador | 2h |  | 42 |  | Sprint 4 |
| 201 | 3.2.1.3 | Implementar mecanismo anti-corrupcion | 4h | 2026-05-13 | 2026-05-14 | 262 |  |  | 2026-05-13 | 2026-05-14 | 4h | 4.25d | Desarrollador | 4h |  | 84 |  | Sprint 4 |

| ID | WBS | Task | Duration | Start | Finish | Predecessors | Baseline start | Baseline finish | Baseline duration | Total slack | Resources | Work | Cost | "Sprint" |
| --- | --- | --- | --- | --- | --- | --- | --- | --- | --- | --- | --- | --- | --- | --- |
| 202 | 3.2.2 | **Sistema de checkpoints** | 3d | 2026-05-13 | 2026-05-18 |  | 2026-05-13 | 2026-05-18 | 3d | 2.25d |  | 12h | 252 |  |
| 203 | 3.2.2.1 | Implementar lógica de checkpoints | 12h | 2026-05-13 | 2026-05-18 | 262 | 2026-05-13 | 2026-05-18 | 12h | 2.25d | Desarrollador | 12h | 252 | Sprint 4 |
| 204 | 3.2.3 | **Persistencia de habilidades** | 2d | 2026-05-13 | 2026-05-15 |  | 2026-05-13 | 2026-05-15 | 2d | 3.25d |  | 8h | 168 |  |
| 205 | 3.2.3.1 | Implementar guardado y carga de habilidades | 8h | 2026-05-13 | 2026-05-15 | 262 | 2026-05-13 | 2026-05-15 | 8h | 3.25d | Desarrollador | 8h | 168 | Sprint 4 |
| 206 | 3.2.4 | **Persistencia de progreso** | 3d | 2026-05-14 | 2026-05-19 |  | 2026-05-14 | 2026-05-19 | 3d | 1.75d |  | 12h | 252 |  |
| 207 | 3.2.4.1 | Implementar sistema de escritura y lectura de datos | 12h | 2026-05-14 | 2026-05-19 | 200 | 2026-05-14 | 2026-05-19 | 12h | 1.75d | Desarrollador | 12h | 252 | Sprint 4 |
| 208 | 3.3 | **Sistema de leaderboard y analíticas** | 3d | 2026-05-14 | 2026-05-19 |  | 2026-05-14 | 2026-05-19 | 3d | 1.75d |  | 46h | 982 |  |
| 209 | 3.3.1 | **Registro de métricas** | 3d | 2026-05-14 | 2026-05-19 |  | 2026-05-14 | 2026-05-19 | 3d | 1.75d |  | 12h | 252 |  |
| 210 | 3.3.1.1 | Implementar captura de métricas | 12h | 2026-05-14 | 2026-05-19 | 200 | 2026-05-14 | 2026-05-19 | 12h | 1.75d | Desarrollador | 12h | 252 | Sprint 4 |
| 211 | 3.3.2 | **Identificación de jugadores** | 1d | 2026-05-14 | 2026-05-15 |  | 2026-05-14 | 2026-05-15 | 1d | 3.75d |  | 7h | 147 |  |
| 212 | 3.3.2.1 | Implementar introducción de nickname | 3h | 2026-05-14 | 2026-05-14 | 200 | 2026-05-14 | 2026-05-14 | 3h | 4d | Desarrollador | 3h | 63 | Sprint 4 |
| 213 | 3.3.2.2 | Implementar generación de UUID | 4h | 2026-05-14 | 2026-05-15 | 200 | 2026-05-14 | 2026-05-15 | 4h | 3.75d | Desarrollador | 4h | 84 | Sprint 4 |
| 214 | 3.3.3 | **Envío y alamcenamiento de datos** | 2d | 2026-05-14 | 2026-05-18 |  | 2026-05-14 | 2026-05-18 | 2d | 2.75d |  | 15h | 315 |  |
| 215 | 3.3.3.1 | Configurar comunicación cliente-servidor | 8h | 2026-05-14 | 2026-05-18 | 200 | 2026-05-14 | 2026-05-18 | 8h | 2.75d | Desarrollador | 8h | 168 | Sprint 4 |
| 216 | 3.3.3.2 | Implementar envío de métricas | 7h | 2026-05-14 | 2026-05-15 | 200 | 2026-05-14 | 2026-05-15 | 7h | 3d | Desarrollador | 7h | 147 | Sprint 4 |
| 217 | 3.3.4 | **Visualización de leaderboard** | 2d | 2026-05-14 | 2026-05-18 |  | 2026-05-14 | 2026-05-18 | 2d | 2.75d |  | 12h | 268 |  |
| 218 | 3.3.4.1 | Diseñar interfaz de clasificación | 4h | 2026-05-14 | 2026-05-15 | 200 | 2026-05-14 | 2026-05-15 | 4h | 3.75d | Diseñador | 4h | 100 | Sprint 4 |
| 219 | 3.3.4.2 | Implementar listas ordenadas según métricas | 8h | 2026-05-14 | 2026-05-18 | 200 | 2026-05-14 | 2026-05-18 | 8h | 2.75d | Desarrollador | 8h | 168 | Sprint 4 |
| 220 | 3.4 | **Sistema de audio** | 1.25d | 2026-05-14 | 2026-05-15 |  | 2026-05-14 | 2026-05-15 | 1.25d | 0d |  | 85h | 1,785 |  |
| 221 | 3.4.1 | **Música de niveles** | 1d | 2026-05-14 | 2026-05-15 |  | 2026-05-14 | 2026-05-15 | 1d | 3.75d |  | 20h | 420 |  |
| 222 | 3.4.1.1 | Integrar tema musical del tutorial | 4h | 2026-05-14 | 2026-05-15 | 200 | 2026-05-14 | 2026-05-15 | 4h | 3.75d | Desarrollador | 4h | 84 | Sprint 4 |
| 223 | 3.4.1.2 | Integrar tema musical del nivel 1 | 4h | 2026-05-14 | 2026-05-15 | 200 | 2026-05-14 | 2026-05-15 | 4h | 3.75d | Desarrollador | 4h | 84 | Sprint 4 |
| 224 | 3.4.1.3 | Integrar tema musical del nivel 2 | 4h | 2026-05-14 | 2026-05-15 | 200 | 2026-05-14 | 2026-05-15 | 4h | 3.75d | Desarrollador | 4h | 84 | Sprint 4 |
| 225 | 3.4.1.4 | Integrar tema musical del nivel 3 | 4h | 2026-05-14 | 2026-05-15 | 200 | 2026-05-14 | 2026-05-15 | 4h | 3.75d | Desarrollador | 4h | 84 | Sprint 4 |
| 226 | 3.4.1.5 | Integrar tema musical del nivel final | 4h | 2026-05-14 | 2026-05-15 | 200 | 2026-05-14 | 2026-05-15 | 4h | 3.75d | Desarrollador | 4h | 84 | Sprint 4 |

| ID | WBS | Task | Duration | Start | Finish | Predecessors | Baseline start | Baseline finish | Baseline duration | Total slack | Resources | Work | Cost | "Sprint" |
| --- | --- | --- | --- | --- | --- | --- | --- | --- | --- | --- | --- | --- | --- | --- |
| 227 | 3.4.2 | **Música de jefes** | 1.25d | 2026-05-14 | 2026-05-15 |  | 2026-05-14 | 2026-05-15 | 1.25d | 3.5d |  | 25h | 525 |  |
| 228 | 3.4.2.1 | Integrar tema musical de Umbra | 5h | 2026-05-14 | 2026-05-15 | 200 | 2026-05-14 | 2026-05-15 | 5h | 3.5d | Desarrollador | 5h | 105 | Sprint 4 |
| 229 | 3.4.2.2 | Integrar tema musical del Guardián de Hielo | 5h | 2026-05-14 | 2026-05-15 | 200 | 2026-05-14 | 2026-05-15 | 5h | 3.5d | Desarrollador | 5h | 105 | Sprint 4 |
| 230 | 3.4.2.3 | Integrar tema musical del Coloso de Ceniza | 5h | 2026-05-14 | 2026-05-15 | 200 | 2026-05-14 | 2026-05-15 | 5h | 3.5d | Desarrollador | 5h | 105 | Sprint 4 |
| 231 | 3.4.2.4 | Integrar tema musical de la Tempestad Dorada | 5h | 2026-05-14 | 2026-05-15 | 200 | 2026-05-14 | 2026-05-15 | 5h | 3.5d | Desarrollador | 5h | 105 | Sprint 4 |
| 232 | 3.4.2.5 | Integrar tema musical del Vacío | 5h | 2026-05-14 | 2026-05-15 | 200 | 2026-05-14 | 2026-05-15 | 5h | 3.5d | Desarrollador | 5h | 105 | Sprint 4 |
| 233 | 3.4.3 | **Música de pantallas secundarias** | 1d | 2026-05-14 | 2026-05-15 |  | 2026-05-14 | 2026-05-15 | 1d | 3.75d |  | 12h | 252 |  |
| 234 | 3.4.3.1 | Implementar tema musical de inicio | 4h | 2026-05-14 | 2026-05-15 | 200 | 2026-05-14 | 2026-05-15 | 4h | 3.75d | Desarrollador | 4h | 84 | Sprint 4 |
| 235 | 3.4.3.2 | Implementar tema musical de pausa | 4h | 2026-05-14 | 2026-05-15 | 200 | 2026-05-14 | 2026-05-15 | 4h | 3.75d | Desarrollador | 4h | 84 | Sprint 4 |
| 236 | 3.4.3.3 | Implementar tema musical de créditos | 4h | 2026-05-14 | 2026-05-15 | 200 | 2026-05-14 | 2026-05-15 | 4h | 3.75d | Desarrollador | 4h | 84 | Sprint 4 |
| 237 | 3.4.4 | **Efectos de sonido** | 1d | 2026-05-14 | 2026-05-15 |  | 2026-05-14 | 2026-05-15 | 1d | 3.75d |  | 16h | 336 |  |
| 238 | 3.4.4.1 | Implementar efectos de sonido de movimiento | 4h | 2026-05-14 | 2026-05-15 | 200 | 2026-05-14 | 2026-05-15 | 4h | 3.75d | Desarrollador | 4h | 84 | Sprint 4 |
| 239 | 3.4.4.2 | Implementar efectos de sonido de combate | 4h | 2026-05-14 | 2026-05-15 | 200 | 2026-05-14 | 2026-05-15 | 4h | 3.75d | Desarrollador | 4h | 84 | Sprint 4 |
| 240 | 3.4.4.3 | Implementar efectos de sonido de entorno | 4h | 2026-05-14 | 2026-05-15 | 200 | 2026-05-14 | 2026-05-15 | 4h | 3.75d | Desarrollador | 4h | 84 | Sprint 4 |
| 241 | 3.4.4.4 | Implementar efectos de sonido de menús | 4h | 2026-05-14 | 2026-05-15 | 200 | 2026-05-14 | 2026-05-15 | 4h | 3.75d | Desarrollador | 4h | 84 | Sprint 4 |
| 242 | 3.4.5 | **Sistema de control de volumen** | 1.25d | 2026-05-14 | 2026-05-15 |  | 2026-05-14 | 2026-05-15 | 1.25d | 0d |  | 12h | 252 |  |
| 243 | 3.4.5.1 | Programar buses de audio | 5h | 2026-05-14 | 2026-05-15 | 200 | 2026-05-14 | 2026-05-15 | 5h | 3.5d | Desarrollador | 5h | 105 | Sprint 4 |
| 244 | 3.4.5.2 | Vincular controles de audio | 4h | 2026-05-14 | 2026-05-15 | 200 | 2026-05-14 | 2026-05-15 | 4h | 0d | Desarrollador | 4h | 84 | Sprint 4 |
| 245 | 3.4.5.3 | Implementar persistencia de volumen | 3h | 2026-05-14 | 2026-05-14 | 200 | 2026-05-14 | 2026-05-14 | 3h | 4d | Desarrollador | 3h | 63 | Sprint 4 |
| 246 | 4 | **Calidad** | 74d | 2026-02-02 | 2026-05-14 |  | 2026-02-02 | 2026-05-14 | 74d | 4d |  | 86h | 1,290 |  |
| 247 | 4.1 | **Pruebas y validación** | 74d | 2026-02-02 | 2026-05-14 |  | 2026-02-02 | 2026-05-14 | 74d | 4d |  | 86h | 1,290 |  |
| 248 | 4.1.1 | **Plan de pruebas** | 1.5d | 2026-05-11 | 2026-05-12 |  | 2026-05-11 | 2026-05-12 | 1.5d | 6.5d |  | 11h | 165 |  |
| 249 | 4.1.1.1 | Definir estrategia de QA | 6h | 2026-05-11 | 2026-05-12 | 41 | 2026-05-11 | 2026-05-12 | 6h | 6.5d | Tester | 6h | 90 | Sprint 4 |
| 250 | 4.1.1.2 | Establecer casos de uso a probar | 5h | 2026-05-11 | 2026-05-12 | 41 | 2026-05-11 | 2026-05-12 | 5h | 6.75d | Tester | 5h | 75 | Sprint 4 |

| ID | WBS | Task | Duration | Start | Finish | Predecessors | Baseline start | Baseline finish | Baseline duration | Total slack | Resources | Work | Cost | "Sprint" |
| --- | --- | --- | --- | --- | --- | --- | --- | --- | --- | --- | --- | --- | --- | --- |
| 251 | 4.1.2 | **Pruebas funcionales** | 2.5d | 2026-05-11 | 2026-05-13 |  | 2026-05-11 | 2026-05-13 | 2.5d | 0d |  | 27h | 405 |  |
| 252 | 4.1.2.1 | Probar navegación de menús | 5h | 2026-05-11 | 2026-05-12 | 41 | 2026-05-11 | 2026-05-12 | 5h | 0.25d | Tester | 5h | 75 | Sprint 4 |
| 253 | 4.1.2.2 | Probar persistencia de guardado | 6h | 2026-05-11 | 2026-05-12 | 41 | 2026-05-11 | 2026-05-12 | 6h | 0d | Tester | 6h | 90 | Sprint 4 |
| 254 | 4.1.2.3 | Probar carga de escenas | 6h | 2026-05-11 | 2026-05-12 | 41 | 2026-05-11 | 2026-05-12 | 6h | 0d | Tester | 6h | 90 | Sprint 4 |
| 255 | 4.1.2.4 | Probar mecánicas principales | 10h | 2026-05-11 | 2026-05-13 | 41 | 2026-05-11 | 2026-05-13 | 10h | 5.5d | Tester | 10h | 150 | Sprint 4 |
| 256 | 4.1.3 | **Pruebas de jugabilidad** | 72d | 2026-02-02 | 2026-05-12 |  | 2026-02-02 | 2026-05-12 | 72d | 6d |  | 28h | 420 |  |
| 257 | 4.1.3.1 | Realizar sesiones de playtesting | 15h | 2026-02-02 | 2026-02-05 |  | 2026-02-02 | 2026-02-05 | 15h | 74.25d | Tester | 15h | 225 |  |
| 258 | 4.1.3.2 | Ajustar curva de dificultad | 8h | 2026-05-11 | 2026-05-12 | 41 | 2026-05-11 | 2026-05-12 | 8h | 6d | Tester | 8h | 120 | Sprint 4 |
| 259 | 4.1.3.3 | Ajustar respuesta de controles | 5h | 2026-05-11 | 2026-05-12 | 41 | 2026-05-11 | 2026-05-12 | 5h | 0.25d | Tester | 5h | 75 | Sprint 4 |
| 260 | 4.1.4 | **Optimización** | 2.5d | 2026-05-12 | 2026-05-14 |  | 2026-05-12 | 2026-05-14 | 2.5d | 0d |  | 20h | 300 |  |
| 261 | 4.1.4.1 | Analizar el rendimiento del juego | 10h | 2026-05-12 | 2026-05-14 | 252, 253, 254, 259 | 2026-05-12 | 2026-05-14 | 10h | 4d | Tester | 10h | 150 | Sprint 4 |
| 262 | 4.1.4.2 | Optimizar scripts | 5h | 2026-05-12 | 2026-05-13 | 259, 254, 253, 252 | 2026-05-12 | 2026-05-13 | 5h | 0d | Tester | 5h | 75 | Sprint 4 |
| 263 | 4.1.4.3 | Optimizar recursos gráficos | 5h | 2026-05-12 | 2026-05-13 | 259, 254, 253, 252 | 2026-05-12 | 2026-05-13 | 5h | 5.25d | Tester | 5h | 75 | Sprint 4 |
| 264 | 5 | **Entrega y cierre** | 78d | 2026-02-02 | 2026-05-20 |  | 2026-02-02 | 2026-05-20 | 78d | 0d |  | 87.5h | 2,503.5 |  |
| 265 | 5.1 | **Entrega de producto** | 0.75d | 2026-05-15 | 2026-05-15 |  | 2026-05-15 | 2026-05-15 | 0.75d | 0d |  | 6.5h | 136.5 |  |
| 266 | 5.1.1 | **Build jugable** | 0.75d | 2026-05-15 | 2026-05-15 |  | 2026-05-15 | 2026-05-15 | 0.75d | 0d |  | 6.5h | 136.5 |  |
| 267 | 5.1.1.1 | Compilar versión jugable para Windows | 3h | 2026-05-15 | 2026-05-15 | 244 | 2026-05-15 | 2026-05-15 | 3h | 0d | Desarrollador | 3h | 63 | Sprint 4 |
| 268 | 5.1.1.2 | Verificar recursos incluidos | 3h | 2026-05-15 | 2026-05-15 | 244 | 2026-05-15 | 2026-05-15 | 3h | 0d | Desarrollador | 3h | 63 | Sprint 4 |
| 269 | 5.1.1.3 | Crear instalador | 0.5h | 2026-05-15 | 2026-05-15 | 244 | 2026-05-15 | 2026-05-15 | 0.5h | 0.62d | Desarrollador | 0.5h | 10.5 | Sprint 4 |
| 270 | 5.2 | **Documentación de cierre** | 78d | 2026-02-02 | 2026-05-20 |  | 2026-02-02 | 2026-05-20 | 78d | 0d |  | 81h | 2,367 |  |
| 271 | 5.2.1 | **Memoria** | 78d | 2026-02-02 | 2026-05-20 |  | 2026-02-02 | 2026-05-20 | 78d | 0d |  | 74h | 2,220 |  |
| 272 | 5.2.1.1 | Redacción de informe de cierre | 4h | 2026-05-20 | 2026-05-20 | 42, 36, 32, 28 | 2026-05-20 | 2026-05-20 | 4h | 0d | Jefe de Proyecto | 4h | 120 | Sprint 4 |
| 273 | 5.2.1.2 | Redacción de la memoria | 70h | 2026-02-02 | 2026-02-25 |  | 2026-02-02 | 2026-02-25 | 70h | 60.5d | Jefe de Proyecto | 70h | 2,100 | Sprint 1, Sprint 2, Sprint 3, Sprint 4 |
| 274 | 5.2.2 | **Manuales** | 1.75d | 2026-05-18 | 2026-05-19 |  | 2026-05-18 | 2026-05-19 | 1.75d | 0d |  | 7h | 147 |  |
| 275 | 5.2.2.1 | Realizar manual de usuario para desarrolladores y usuarios finales | 7h | 2026-05-18 | 2026-05-19 | 269, 268, 267 | 2026-05-18 | 2026-05-19 | 7h | 0d | Desarrollador | 7h | 147 | Sprint 4 |
